# 白名单数据源

How a schedule from a web Gantt chart changed from version to version. A marks actual dates.

## Version 1 (saved 2025-12-04)

| ID | WBS | Task | Duration | Start | Finish |
| --- | --- | --- | --- | --- | --- |
| 2 |  | 上线日 | 1d | 2026-01-15 | 2026-01-15 |
| 3 | 2 | **业务** | 4d | 2025-12-02 | 2025-12-05 |
| 4 |  | 决策-前置小程序，数据字典、规则、指标等内容待明确补充需求 | 1d | 2025-12-02 | 2025-12-02 |
| 5 |  | ES-接口需求待完善 | 2d | 2025-12-02 | 2025-12-03 |
| 6 |  | 各系统（营销监测、ES、决策-前置小程序、决策-应用端）白名单需求完善明确 | 1d | 2025-12-04 | 2025-12-04 |
| 7 |  | 各系统（中台查ES）极优链路需求完善 | 1d | 2025-12-04 | 2025-12-04 |
| 8 |  | 各系统需求评估准出 | 2d | 2025-12-04 | 2025-12-05 |
| 9 |  | 孚嘉（外部初步评估开发时间） | 10d | 2025-12-02 | 2025-12-15 |
| 10 | 4 | **决策-前置小程序** | 22d | 2025-12-08 | 2026-01-06 |
| 11 |  | 开发 | 8d | 2025-12-08 | 2025-12-17 |
| 12 |  | 联调（与孚嘉） | 2d | 2025-12-18 | 2025-12-19 |
| 13 |  | 测试 | 12d | 2025-12-22 | 2026-01-06 |
| 14 | 5 | **营销监测** | 26d | 2025-12-08 | 2026-01-12 |
| 15 |  | 需求 | 1d | 2025-12-08 | 2025-12-08 |
| 16 |  | 设计 | 2d | 2025-12-09 | 2025-12-10 |
| 17 |  | 开发 | 14d | 2025-12-11 | 2025-12-30 |
| 18 |  | 造数，提供下游ES/决策/中台开发联调 | 1d | 2025-12-11 | 2025-12-11 |
| 19 |  | 确定表结构 | 1d | 2025-12-09 | 2025-12-09 |
| 20 |  | 联调（与决策-前置、ES、决策-应用） | 2d | 2025-12-31 | 2026-01-01 |
| 21 |  | 测试 | 6d | 2026-01-05 | 2026-01-12 |
| 22 | 6 | **ES（初步评估）** | 14d | 2025-12-02 | 2025-12-19 |
| 23 |  | 压测 | 2d | 2025-12-02 | 2025-12-03 |
| 24 |  | 开发（依赖营销监测表结构） | 3d | 2025-12-11 | 2025-12-15 |
| 25 |  | 提供接口文档给决策、中台 | 1d | 2025-12-11 | 2025-12-11 |
| 26 |  | 联调（与中台） | 2d | 2025-12-16 | 2025-12-17 |
| 27 |  | 联调（与决策-应用端） | 2d | 2025-12-18 | 2025-12-19 |
| 28 | 7 | **决策-应用端** | 22d | 2025-12-12 | 2026-01-12 |
| 29 |  | 开发（依赖ES提供接口文档） | 10d | 2025-12-12 | 2025-12-25 |
| 30 |  | 联调（与ES） | 2d | 2025-12-24 | 2025-12-25 |
| 31 |  | 测试（在极优项目链路中协同全流程测试） | 12d | 2025-12-26 | 2026-01-12 |
| 32 | 8 | **渠道、中台-客户业务流程** | 11d | 2025-12-08 | 2025-12-22 |
| 33 |  | 需求 | 2d | 2025-12-08 | 2025-12-09 |
| 34 |  | 设计 | 1d | 2025-12-10 | 2025-12-10 |
| 35 |  | 开发 | 3d | 2025-12-11 | 2025-12-15 |
| 36 |  | 联调（与ES） | 2d | 2025-12-16 | 2025-12-17 |
| 37 |  | 交付测试（当前计划预估） | 1d | 2025-12-18 | 2025-12-18 |
| 38 |  | 测试【测试最晚能接受的交付日】 | 1d | 2025-12-22 | 2025-12-22 |

## Version 2 (saved 2025-12-04)

Last finish stays 2026-01-15.

Added:

| ID | Task | Duration | Start | Finish |
| --- | --- | --- | --- | --- |
| 24 | 开发 | 3d | 2025-12-11 | 2025-12-15 |

Removed: 24 开发（依赖营销监测表结构）
