# 白名单数据源

How a schedule from a web Gantt chart changed from version to version. A marks actual dates.

## Version 1 (saved 2025-12-02)

| ID | WBS | Task | Duration | Start | Finish |
| --- | --- | --- | --- | --- | --- |
| 2 | 1 | **业务** | 4d | 2025-12-02 | 2025-12-05 |
| 3 |  | 决策-前置小程序，数据字典、规则、指标等内容待明确补充需求 | 1d | 2025-12-02 | 2025-12-02 |
| 4 |  | ES-接口需求待完善 | 2d | 2025-12-02 | 2025-12-03 |
| 5 |  | 各系统（营销监测、ES、决策-前置小程序、决策-应用端）白名单需求完善明确 | 1d | 2025-12-04 | 2025-12-04 |
| 6 |  | 各系统（中台查ES）极优链路需求完善 | 1d | 2025-12-04 | 2025-12-04 |
| 7 |  | 各系统需求评估准出 | 2d | 2025-12-04 | 2025-12-05 |
| 8 |  | 孚嘉（初步评估） | 10d | 2025-12-02 | 2025-12-15 |
| 9 | 3 | **决策-前置小程序** | 16d | 2025-12-08 | 2025-12-29 |
| 10 |  | 开发 | 5d | 2025-12-08 | 2025-12-12 |
| 11 |  | 联调（与孚嘉） | 2d | 2025-12-16 | 2025-12-17 |
| 12 |  | 测试 | 8d | 2025-12-18 | 2025-12-29 |
| 13 | 4 | **营销监测** | 26d | 2025-12-08 | 2026-01-12 |
| 14 |  | 需求 | 1d | 2025-12-08 | 2025-12-08 |
| 15 |  | 设计 | 2d | 2025-12-09 | 2025-12-10 |
| 16 |  | 开发 | 14d | 2025-12-11 | 2025-12-30 |
| 17 |  | 造数，提供下游ES/决策/中台开发联调 | 1d | 2025-12-11 | 2025-12-11 |
| 18 |  | 联调（与决策-前置、ES、决策-应用） | 2d | 2025-12-31 | 2026-01-01 |
| 19 |  | 测试 | 6d | 2026-01-05 | 2026-01-12 |
| 20 | 5 | **ES（初步评估，实际需要需求更新后评估）** | 18d | 2025-12-02 | 2025-12-25 |
| 21 |  | 压测 | 4d | 2025-12-02 | 2025-12-05 |
| 22 |  | 开发 | 3d | 2025-12-08 | 2025-12-10 |
| 23 |  | 提供接口文档给决策、中台 | 1d | 2025-12-08 | 2025-12-08 |
| 24 |  | 联调（与营销监测、与中台） | 2d | 2025-12-12 | 2025-12-15 |
| 25 |  | 联调（与决策-应用端） | 2d | 2025-12-24 | 2025-12-25 |
| 26 | 6 | **决策-应用端** | 11d | 2025-12-12 | 2025-12-26 |
| 27 |  | 开发（ES提供接口文档可并行） | 8d | 2025-12-12 | 2025-12-23 |
| 28 |  | 联调（与ES） | 2d | 2025-12-24 | 2025-12-25 |
| 29 |  | 测试（在极优项目链路中协同全流程测试） | 1d | 2025-12-26 | 2025-12-26 |
| 30 | 7 | **渠道、中台流程测试** | 5d | 2025-12-16 | 2025-12-22 |
| 31 |  | 联调（与ES） | 2d | 2025-12-16 | 2025-12-17 |
| 32 |  | 交付测试（当前计划预估） | 1d | 2025-12-18 | 2025-12-18 |
| 33 |  | 测试【测试最晚能接受的交付日】 | 1d | 2025-12-22 | 2025-12-22 |

## Version 2 (saved 2025-12-02)

Last finish 2026-01-12 → 2026-01-15 (+3d).

Added:

| ID | Task | Duration | Start | Finish |
| --- | --- | --- | --- | --- |
| 2 | 上线日 | 1d | 2026-01-15 | 2026-01-15 |
| 9 | 孚嘉（外部初步评估开发时间） | 10d | 2025-12-02 | 2025-12-15 |

Removed: 8 孚嘉（初步评估）

Changed:

| ID | Task | Finish | Duration |
| --- | --- | --- | --- |
| 10 | **决策-前置小程序** | 2025-12-29 → 2025-12-31 (+2d) | 16d → 18d |
| 13 | 测试 | 2025-12-29 → 2025-12-31 (+2d) | 8d → 10d |

## Version 3 (saved 2025-12-03)

Last finish stays 2026-01-15.

Added:

| ID | Task | Duration | Start | Finish |
| --- | --- | --- | --- | --- |
| 31 | **渠道、中台-客户业务流程** | 9d | 2025-12-10 | 2025-12-22 |
| 32 | 设计 | 1d | 2025-12-10 | 2025-12-10 |
| 33 | 开发 | 3d | 2025-12-11 | 2025-12-15 |

Removed: 31 渠道、中台流程测试

Changed:

| ID | Task | Start | Finish | Duration |
| --- | --- | --- | --- | --- |
| 10 | **决策-前置小程序** |  | 2025-12-31 → 2026-01-06 (+6d) | 18d → 22d |
| 11 | 开发 |  | 2025-12-12 → 2025-12-17 (+5d) | 5d → 8d |
| 12 | 联调（与孚嘉） | 2025-12-16 → 2025-12-18 (+2d) | 2025-12-17 → 2025-12-19 (+2d) |  |
| 13 | 测试 | 2025-12-18 → 2025-12-22 (+4d) | 2025-12-31 → 2026-01-06 (+6d) | 10d → 12d |

## Version 4 (saved 2025-12-04)

Last finish stays 2026-01-15.

Added:

| ID | Task | Duration | Start | Finish | Predecessors |
| --- | --- | --- | --- | --- | --- |
| 9 | 孚嘉（外部评估开发时间） | 10d | 2025-12-02 | 2025-12-15 |  |
| 19 | 确定表结构 | 1d | 2025-12-09 | 2025-12-09 |  |
| 22 | **ES（初步评估）** | 15d | 2025-12-01 | 2025-12-19 |  |
| 25 | 提供接口文档给决策、中台（依赖营销监测表结构t+2） | 2d | 2025-12-10 | 2025-12-11 | 19 |
| 27 | 开发（依赖ES提供接口文档） | 10d | 2025-12-12 | 2025-12-25 | 25 |
| 28 | 开发（第一批功能交付） | 4d | 2025-12-12 | 2025-12-17 |  |
| 29 | 测试（按开发分批两次交付的形式压缩整体工期） | 16d | 2025-12-18 | 2026-01-08 | 28 |
| 31 | 需求 | 2d | 2025-12-08 | 2025-12-09 |  |

Removed: 9 孚嘉（外部初步评估开发时间）; 21 ES（初步评估，实际需要需求更新后评估）; 24 提供接口文档给决策、中台; 25 联调（与营销监测、与中台）; 26 联调（与决策-应用端）; 28 开发（ES提供接口文档可并行）; 29 联调（与ES）; 30 测试（在极优项目链路中协同全流程测试）

Changed:

| ID | Task | Start | Finish | Duration | Predecessors |
| --- | --- | --- | --- | --- | --- |
| 3 | **业务** | 2025-12-02 → 2025-12-01 (-1d) |  | 4d → 5d |  |
| 4 | 决策-前置小程序，数据字典、规则、指标等内容待明确补充需求 | 2025-12-02 → 2025-12-01 (-1d) |  | 1d → 2d |  |
| 12 | 联调（与孚嘉） |  |  |  | none → 11 |
| 13 | 测试 |  |  |  | none → 12 |
| 16 | 设计 |  |  |  | none → 15 |
| 17 | 开发 |  |  |  | none → 16 |
| 20 | 联调（与决策-前置、ES、决策-应用） |  | 2026-01-01 → 2026-01-02 (+1d) | 2d → 3d | none → 17 |
| 21 | 测试 |  |  |  | none → 20 |
| 23 | 压测 | 2025-12-02 → 2025-12-01 (-1d) | 2025-12-05 → 2025-12-03 (-2d) | 4d → 3d |  |
| 24 | 开发 | 2025-12-08 → 2025-12-10 (+2d) | 2025-12-10 → 2025-12-15 (+5d) | 3d → 4d |  |
| 26 | **决策-应用端** |  | 2025-12-26 → 2026-01-08 (+13d) | 11d → 20d |  |
| 30 | **渠道、中台-客户业务流程** | 2025-12-10 → 2025-12-08 (-2d) |  | 9d → 11d |  |
